# cronograma fase i

Schedule from MS Project, 2009-04-27 to 2009-08-24, A marks actual dates.
fasof

## Calendars

- Standard: Mon-Fri 08:00-12:00, 13:00-17:00; Sat-Sun off.

## Resources

| Resource |
| --- |
| N |
| E |
| TODOS |
| NATHALIE |
| EDGAR |
| NATAHLIE |
| 5 |
| V |

## Schedule

| ID | WBS | Task | Duration | Start | Finish | Predecessors | Complete | Remaining | Total slack | Free slack | Resources | Work | Actual work |
| --- | --- | --- | --- | --- | --- | --- | --- | --- | --- | --- | --- | --- | --- |
| 1 | 1 | **Implementacion E -office fase 1** | 86d | 2009-04-27 A | 2009-08-24 |  | 31% | 59.1d | 0d |  |  | 1568h | 490.4h |
| 2 | 1.1 | **Capacitacion** | 15d | 2009-04-27 A | 2009-05-15 |  | 75% | 3.75d | 71d |  |  | 240h | 180h |
| 3 | 1.1.1 | Capacitacion Host | 15d | 2009-04-27 A | 2009-05-15 |  | 70% | 4.5d | 71d |  | TODOS | 120h | 84h |
| 4 | 1.1.2 | Capacitacion WEB Services | 15d | 2009-04-27 A | 2009-05-15 |  | 80% | 3d | 71d |  | TODOS | 120h | 96h |
| 5 | 1.2 | **Definicion de arquitectura** | 3d | 2009-05-15 A | 2009-05-19 A |  | 100% |  |  |  |  | 48h | 48h |
| 6 | 1.2.1 | Arquitectura fisica | 3d | 2009-05-15 A | 2009-05-19 A |  | 100% |  |  |  | TODOS | 24h | 24h |
| 7 | 1.2.2 | Arquitectura logica | 3d | 2009-05-15 A | 2009-05-19 A |  | 100% |  |  |  | TODOS | 24h | 24h |
| 8 | 1.3 | **Definicion de Interfaces eoffice** | 5d | 2009-05-20 A | 2009-05-26 |  | 80% | 1d | 64d |  |  | 80h | 64h |
| 9 | 1.3.1 | Definicion de WEB Services | 5d | 2009-05-20 A | 2009-05-26 | 7 | 80% | 1d | 64d |  | TODOS | 40h | 32h |
| 10 | 1.3.2 | Definicion de estructuras batch | 5d | 2009-05-20 A | 2009-05-26 | 7 | 80% | 1d | 64d |  | TODOS | 40h | 32h |
| 11 | 1.4 | **Solicitud medios PB** | 16d | 2009-05-07 A | 2009-05-28 |  | 82% | 2.81d | 20.9d |  |  | 232h | 191.2h |
| 12 | 1.4.1 | **Manejo de presolicitud** | 6d | 2009-05-07 A | 2009-05-14 A | 9 | 100% |  |  |  |  | 48h | 48h |
| 13 | 1.4.1.1 | cheques | 2d | 2009-05-07 A | 2009-05-08 A | 9 | 100% |  |  |  | NATHALIE | 16h | 16h |
| 14 | 1.4.1.2 | libretas | 1d | 2009-05-11 A | 2009-05-11 A | 13 | 100% |  |  |  | NATHALIE | 8h | 8h |
| 15 | 1.4.1.3 | tarjetas debito | 2d | 2009-05-12 A | 2009-05-13 A | 14 | 100% |  |  |  | NATHALIE | 16h | 16h |
| 16 | 1.4.1.4 | tarjetas credito | 1d | 2009-05-14 A | 2009-05-14 A | 15 | 100% |  |  |  | NATHALIE | 8h | 8h |
| 17 | 1.4.2 | **Consultas datos cliente CRM** | 1d | 2009-05-07 A | 2009-05-07 A | 9 | 100% |  |  |  |  | 8h | 8h |
| 18 | 1.4.2.1 | colocar servico entirex | 1d | 2009-05-07 A | 2009-05-07 A |  | 100% |  |  |  | EDGAR | 8h | 8h |
| 19 | 1.4.3 | **Radicacion de solicitud de medios** | 4d | 2009-05-08 A | 2009-05-13 A | 18 | 100% |  |  |  |  | 64h | 64h |
| 20 | 1.4.3.1 | cheques | 2d | 2009-05-08 A | 2009-05-11 A | 18 | 100% |  |  |  | EDGAR | 16h | 16h |
| 21 | 1.4.3.2 | libretas | 2d | 2009-05-08 A | 2009-05-11 A | 18 | 100% |  |  |  | EDGAR | 16h | 16h |
| 22 | 1.4.3.3 | tarjetas debito | 2d | 2009-05-12 A | 2009-05-13 A | 21 | 100% |  |  |  | EDGAR | 16h | 16h |
| 23 | 1.4.3.4 | tarjetas credito | 2d | 2009-05-12 A | 2009-05-13 A | 21 | 100% |  |  |  | EDGAR | 16h | 16h |
| 24 | 1.4.4 | **Proceso batch de solicitud medios** | 10d | 2009-05-15 A | 2009-05-28 | 16 | 49% | 5.1d | 20.9d |  |  | 80h | 39.2h |
| 25 | 1.4.4.1 | Asignacion de inventarios a proveedor | 1d | 2009-05-15 A | 2009-05-15 A |  | 100% |  |  |  | EDGAR | 8h | 8h |
| 26 | 1.4.4.2 | Generar archivo de realce y remisoria | 3d | 2009-05-18 A | 2009-05-20 | 25 | 50% | 1.5d | 23.3d | 0d | EDGAR | 24h | 12h |
| 27 | 1.4.4.3 | Asignacion de medios | 1d | 2009-05-21 A | 2009-05-21 | 26 | 60% | 0.4d | 22.7d | 0d | EDGAR | 8h | 4.8h |
| 28 | 1.4.4.4 | Entrega de medios | 3d | 2009-05-22 A | 2009-05-26 | 27 | 60% | 1.2d | 20.9d | 0d | EDGAR | 24h | 14.4h |
| 29 | 1.4.4.5 | Cobros de medios | 2d | 2009-05-27 | 2009-05-28 | 28 |  |  | 20.9d | 0d | EDGAR | 16h |  |

| ID | WBS | Task | Duration | Start | Finish | Predecessors | Complete | Remaining | Total slack | Free slack | Resources | Work | Actual work |
| --- | --- | --- | --- | --- | --- | --- | --- | --- | --- | --- | --- | --- | --- |
| 30 | 1.4.5 | **Habilitacion de medios** | 4d | 2009-05-15 A | 2009-05-20 A | 23 | 100% |  |  |  |  | 32h | 32h |
| 31 | 1.4.5.1 | Internet | 4d | 2009-05-15 A | 2009-05-20 A | 16 | 100% |  |  |  | NATHALIE | 32h | 32h |
| 32 | 1.5 | **Actividades para realizar los casos de uso del Rol:Usuario Comprador** | 25d | 2009-05-21 A | 2009-06-24 |  | 2% | 24.51d | 43d |  |  | 368h | 7.2h |
| 33 | 1.5.1 | **Caso de uso 2: Ingresar información básica** | 4d | 2009-05-21 | 2009-05-26 | 31 |  |  | 0d |  |  | 32h |  |
| 34 | 1.5.1.1 | Definicion de archivos oficinas | 1d | 2009-05-21 | 2009-05-21 |  |  |  | 0d |  | NATHALIE | 8h |  |
| 35 | 1.5.1.2 | WS Consultar oficinas (WS - DIARIO AVViilas consume ATH) | 2d | 2009-05-22 | 2009-05-25 | 34 |  |  | 0d |  | NATHALIE | 16h |  |
| 36 | 1.5.1.3 | Prueba tecnica | 1d | 2009-05-26 | 2009-05-26 | 35 |  |  | 0d |  | NATHALIE | 8h |  |
| 37 | 1.5.2 | **Caso de uso 3: Autenticación** | 12d | 2009-05-29 A | 2009-06-15 | 29 | 6% | 11.23d | 50d |  |  | 112h | 7.2h |
| 38 | 1.5.2.1 | Definicion de archivos listas | 1d | 2009-05-29 A | 2009-05-29 | 29 | 90% | 0.1d | 20d | 0d | EDGAR | 8h | 7.2h |
| 39 | 1.5.2.2 | Validar en lista Clinton dada la información del cliente (WS AVVIILAS) | 2d | 2009-06-01 | 2009-06-02 | 38 |  |  | 59d |  | EDGAR | 16h |  |
| 40 | 1.5.2.3 | Validar en lista de reservas dada la información del cliente (WS AVVILLAS) | 2d | 2009-06-01 | 2009-06-02 | 38 |  |  | 20d | 0d | EDGAR | 16h |  |
| 41 | 1.5.2.4 | Validar en lista PEP dada la información del cliente (WS AVVILLAS) | 2d | 2009-06-03 | 2009-06-04 | 40 |  |  | 20d | 0d | EDGAR | 16h |  |
| 42 | 1.5.2.5 | Validar en lista de empleados del banco dada la información del cliente (WS AVVILLAS) | 2d | 2009-06-05 | 2009-06-08 | 41 |  |  | 20d | 0d | EDGAR | 16h |  |
| 43 | 1.5.2.6 | Prueba tecnica de validacion de listas | 1d | 2009-06-09 | 2009-06-09 | 42 |  |  | 20d | 0d | EDGAR | 8h |  |
| 44 | 1.5.2.7 | Definicion archivos cubrimientos proveedor | 1d | 2009-06-10 | 2009-06-10 | 43 |  |  | 20d | 0d | EDGAR | 8h |  |
| 45 | 1.5.2.8 | Verificar cubrimiento TG dada la ciudad (WS AVVillas consume ATH, diario) | 2d | 2009-06-11 | 2009-06-12 | 44 |  |  | 20d | 0d | EDGAR | 16h |  |
| 46 | 1.5.2.9 | Pruebas tecnica | 1d | 2009-06-15 | 2009-06-15 | 45 |  |  | 20d | 0d | EDGAR | 8h |  |
| 47 | 1.5.3 | **Caso de uso 4: Ingresar información básica** | 4d | 2009-05-27 | 2009-06-01 |  |  |  | 0d |  |  | 32h |  |
| 48 | 1.5.3.1 | Definicion de archivo de profesiones | 1d | 2009-05-27 | 2009-05-27 | 36 |  |  | 0d |  | NATHALIE | 8h |  |
| 49 | 1.5.3.2 | Consultar profesiones (WS AVVillas consume ATH, DIARIO) | 2d | 2009-05-28 | 2009-05-29 | 48 |  |  | 0d |  | NATHALIE | 16h |  |
| 50 | 1.5.3.3 | Obtener información del cliente por CRM (WS AVVillas consume ATH, campos modificables, fecha modificacion) | 1d | 2009-06-01 | 2009-06-01 | 49 |  |  | 0d |  | NATHALIE | 8h |  |
| 51 | 1.5.4 | **Caso de uso 5: Ingresar Actividad Económica** | 4d | 2009-06-02 | 2009-06-05 | 50 |  |  | 0d |  |  | 32h |  |
| 52 | 1.5.4.1 | Definicion de estructuras | 1d | 2009-06-02 | 2009-06-02 | 50 |  |  | 0d |  | NATHALIE | 8h |  |
| 53 | 1.5.4.2 | Consultar actividades ecomicas (WS AVVILLAS consume ATH, diario) | 2d | 2009-06-03 | 2009-06-04 | 52 |  |  | 0d |  | NATHALIE | 16h |  |
| 54 | 1.5.4.3 | Prueba tecnica | 1d | 2009-06-05 | 2009-06-05 | 53 |  |  | 0d |  | NATHALIE | 8h |  |

| ID | WBS | Task | Duration | Start | Finish | Predecessors | Total slack | Free slack | Resources | Work |
| --- | --- | --- | --- | --- | --- | --- | --- | --- | --- | --- |
| 55 | 1.5.5 | **Caso de uso 6: Ingresar Información financiera** | 3d | 2009-06-08 | 2009-06-10 | 54 | 53d |  |  | 24h |
| 56 | 1.5.5.1 | Definicion estructuras | 1d | 2009-06-08 | 2009-06-08 | 54 | 53d | 0d | NATHALIE | 8h |
| 57 | 1.5.5.2 | Consulta de lista de empresas disponibles (batch diario) | 1d | 2009-06-09 | 2009-06-09 | 56 | 53d | 0d | NATHALIE | 8h |
| 58 | 1.5.5.3 | Prueba tecnica | 1d | 2009-06-10 | 2009-06-10 | 57 | 53d |  | NATHALIE | 8h |
| 59 | 1.5.6 | **Caso de uso 8: Ingresar información de operaciones internacionales** | 3d | 2009-06-08 | 2009-06-10 | 54 | 0d |  |  | 32h |
| 60 | 1.5.6.1 | Definicion estructuras | 1d | 2009-06-08 | 2009-06-08 | 54 | 0d |  | NATHALIE | 8h |
| 61 | 1.5.6.2 | Consulta de paises (Proceso batch diario) | 1d | 2009-06-09 | 2009-06-09 | 60 | 54d |  | NATHALIE | 8h |
| 62 | 1.5.6.3 | Consulta de bancos (Proceso batch diario) | 1d | 2009-06-09 | 2009-06-09 | 60 | 0d |  | NATHALIE | 8h |
| 63 | 1.5.6.4 | Pruebas tecnicas | 1d | 2009-06-10 | 2009-06-10 | 62 | 0d |  | NATHALIE | 8h |
| 64 | 1.5.7 | **Caso de uso 15:Configurar nueva cuenta de ahorros en AV Villas** | 7d | 2009-06-16 | 2009-06-24 | 46 | 20d |  |  | 56h |
| 65 | 1.5.7.1 | Definicion estructuras | 1d | 2009-06-16 | 2009-06-16 | 46 | 20d | 0d | EDGAR | 8h |
| 66 | 1.5.7.2 | Retorna listado de documentos que el cliente debe adjuntar (Web service ) | 1d | 2009-06-17 | 2009-06-17 | 65 | 20d | 0d | EDGAR | 8h |
| 67 | 1.5.7.3 | Retornar monto minino de apertura cuenta ahorros (Web service) | 1d | 2009-06-18 | 2009-06-18 | 66 | 20d | 0d | EDGAR | 8h |
| 68 | 1.5.7.4 | Radicar cuenta (Web service) | 3d | 2009-06-19 | 2009-06-23 | 67 | 20d | 0d | EDGAR | 24h |
| 69 | 1.5.7.5 | Prueba tecnica | 1d | 2009-06-24 | 2009-06-24 | 68 | 20d | 0d | EDGAR | 8h |
| 70 | 1.5.8 | **Caso de uso 16:Asignar medios de manejo** | 6d | 2009-06-11 | 2009-06-18 | 63 | 0d |  |  | 48h |
| 71 | 1.5.8.1 | Definicion estructura | 1d | 2009-06-11 | 2009-06-11 | 63 | 0d |  | NATHALIE | 8h |
| 72 | 1.5.8.2 | Registrar medios solicitados (WS ) | 3d | 2009-06-12 | 2009-06-16 | 71 | 0d |  | NATHALIE | 24h |
| 73 | 1.5.8.3 | Retornar lista de los medios de manejo dado un tipo de cuenta (WS Diarios) | 1d | 2009-06-17 | 2009-06-17 | 72 | 0d |  | NATHALIE | 8h |
| 74 | 1.5.8.4 | Prueba tecnica | 1d | 2009-06-18 | 2009-06-18 | 73 | 0d |  | NATHALIE | 8h |
| 75 | 1.6 | **Actividades para realizar los casos de uso del Rol: Contact Center** | 3d | 2009-06-19 | 2009-06-23 | 74 | 0d |  |  | 24h |
| 76 | 1.6.1 | Definicion de integracion | 1d | 2009-06-19 | 2009-06-19 | 74 | 0d |  | NATHALIE | 8h |
| 77 | 1.6.2 | Registrar alerta de apertura o solicitud eoffice (WS) | 1d | 2009-06-22 | 2009-06-22 | 76 | 0d |  | NATHALIE | 8h |
| 78 | 1.6.3 | Prueba tecnica | 1d | 2009-06-23 | 2009-06-23 | 77 | 0d |  | NATHALIE | 8h |

| ID | WBS | Task | Duration | Start | Finish | Predecessors | Total slack | Free slack | Resources | Work |
| --- | --- | --- | --- | --- | --- | --- | --- | --- | --- | --- |
| 79 | 1.7 | **Administracion Paramametros Eoffice** | 7d | 2009-06-25 | 2009-07-03 | 69 | 20d |  |  | 56h |
| 80 | 1.7.1 | Administrar ciudades de cubrimiento | 2d | 2009-06-25 | 2009-06-26 | 69 | 20d | 0d | EDGAR | 16h |
| 81 | 1.7.2 | Administrar monto minimos | 2d | 2009-06-29 | 2009-06-30 | 80 | 20d | 0d | EDGAR | 16h |
| 82 | 1.7.3 | Administrar medios de pago por producto | 2d | 2009-07-01 | 2009-07-02 | 81 | 20d | 0d | EDGAR | 16h |
| 83 | 1.7.4 | Pruebas tecnicas | 1d | 2009-07-03 | 2009-07-03 | 82 | 20d | 0d | EDGAR | 8h |
| 84 | 1.8 | **Procesos Batchs de vinculación** | 3d | 2009-06-24 | 2009-06-26 | 78 | 0d |  |  | 24h |
| 85 | 1.8.1 | Intercambio de archivo de prospectos (batch, incluye descripcion tablas) | 2d | 2009-06-24 | 2009-06-25 | 78 | 0d |  | NATHALIE | 16h |
| 86 | 1.8.2 | Prueba tecnica | 1d | 2009-06-26 | 2009-06-26 | 85 | 0d |  | NATHALIE | 8h |
| 87 | 1.9 | **Proceso Activación** | 7d | 2009-06-29 | 2009-07-07 | 86 | 0d |  |  | 56h |
| 88 | 1.9.1 | Definicion estructuras | 1d | 2009-06-29 | 2009-06-29 | 78 | 0d |  | NATHALIE | 8h |
| 89 | 1.9.2 | Actualizacion CRM (WS AVVillas consume ATH) | 2d | 2009-06-30 | 2009-07-01 | 88 | 0d |  | NATHALIE | 16h |
| 90 | 1.9.3 | Prueba tecnica | 1d | 2009-07-02 | 2009-07-02 | 89 | 0d |  | NATHALIE | 8h |
| 91 | 1.9.4 | Activacion producto (WS AVVillas consume ATH Activar o Desactivar) | 2d | 2009-07-03 | 2009-07-06 | 90 | 0d |  | NATHALIE | 16h |
| 92 | 1.9.5 | Prueba tecnica | 1d | 2009-07-07 | 2009-07-07 | 91 | 0d |  | NATHALIE | 8h |
| 93 | 1.10 | **Procesos Batchs de aperturas** | 11d | 2009-07-06 | 2009-07-20 | 83 | 20d |  |  | 88h |
| 94 | 1.10.1 | Definicion estructuras y conocimiento proceso | 3d | 2009-07-06 | 2009-07-08 | 83 | 20d | 0d | EDGAR | 24h |
| 95 | 1.10.2 | Apertura batch de productos | 2d | 2009-07-09 | 2009-07-10 | 94 | 20d | 0d | EDGAR | 16h |
| 96 | 1.10.3 | Prueba tecnica | 2d | 2009-07-13 | 2009-07-14 | 95 | 20d | 0d | EDGAR | 16h |
| 97 | 1.10.4 | Transferencias iniciales | 2d | 2009-07-15 | 2009-07-16 | 96 | 20d | 0d | EDGAR | 16h |
| 98 | 1.10.5 | Prueba tecnica | 2d | 2009-07-17 | 2009-07-20 | 97 | 20d | 0d | EDGAR | 16h |
| 99 | 1.11 | **Asignacion medios** | 4d | 2009-07-08 | 2009-07-13 | 92 | 0d |  |  | 72h |
| 100 | 1.11.1 | Definicion estructuras y conocimiento proceso | 1d | 2009-07-08 | 2009-07-08 | 92 | 0d |  | NATHALIE | 8h |
| 101 | 1.11.2 | Asignacion tarjetas debito | 1d | 2009-07-09 | 2009-07-09 | 100 | 32d |  | NATHALIE | 8h |
| 102 | 1.11.3 | Prueba tecnica | 1d | 2009-07-09 | 2009-07-09 | 100 | 32d |  | NATHALIE | 8h |
| 103 | 1.11.4 | Asignacion libretas | 1d | 2009-07-09 | 2009-07-09 | 100 | 32d |  | NATHALIE | 8h |
| 104 | 1.11.5 | Prueba tecnica | 1d | 2009-07-09 | 2009-07-09 | 100 | 0d |  | NATHALIE | 8h |
| 105 | 1.11.6 | Asignacion chequeras | 1d | 2009-07-10 | 2009-07-10 | 104 | 31d |  | NATHALIE | 8h |
| 106 | 1.11.7 | Prueba tecnica | 1d | 2009-07-10 | 2009-07-10 | 104 | 0d |  | NATHALIE | 8h |
| 107 | 1.11.8 | Asignacion clave audio | 1d | 2009-07-13 | 2009-07-13 | 106 | 30d |  | NATHALIE | 8h |
| 108 | 1.11.9 | Prueba tecnica | 1d | 2009-07-13 | 2009-07-13 | 106 | 0d |  | NATHALIE | 8h |

| ID | WBS | Task | Duration | Start | Finish | Predecessors | Total slack | Free slack | Resources | Work |
| --- | --- | --- | --- | --- | --- | --- | --- | --- | --- | --- |
| 109 | 1.12 | **Procesos con proveedor mensajeria e impresor** | 5d | 2009-07-21 | 2009-07-27 | 108 | 20d |  |  | 40h |
| 110 | 1.12.1 | Remisoria de productos | 1d | 2009-07-21 | 2009-07-21 | 98 | 20d | 0d | EDGAR | 8h |
| 111 | 1.12.2 | **Realce de productos** | 3d | 2009-07-22 | 2009-07-24 | 110 | 20d |  |  | 24h |
| 112 | 1.12.2.1 | Tarjeta debito | 1d | 2009-07-22 | 2009-07-22 | 110 | 20d | 0d | EDGAR | 8h |
| 113 | 1.12.2.2 | Chequera | 1d | 2009-07-23 | 2009-07-23 | 112 | 20d | 0d | EDGAR | 8h |
| 114 | 1.12.2.3 | Libreta | 1d | 2009-07-24 | 2009-07-24 | 113 | 20d | 0d | EDGAR | 8h |
| 115 | 1.12.3 | Confirmacion de entrega | 1d | 2009-07-27 | 2009-07-27 | 114 | 20d |  | EDGAR | 8h |
| 116 | 1.13 | **Pruebas de integracion** | 15d | 2009-07-14 | 2009-08-03 | 108 | 0d |  |  | 120h |
| 117 | 1.13.1 | Soporte pruebas | 15d | 2009-07-14 | 2009-08-03 | 108 | 0d |  | NATHALIE | 120h |
| 118 | 1.14 | **Pruebas de certificacion** | 15d | 2009-08-04 | 2009-08-24 | 117 | 0d |  |  | 120h |
| 119 | 1.14.1 | Soporte pruebas | 15d | 2009-08-04 | 2009-08-24 | 117 | 0d |  | TODOS | 120h |
